# 12ST1121-Technical

Schedule from MS Project XML, 2012-12-14 to 2013-10-01, A marks actual dates.

## Calendars

- Standard: Mon-Fri 08:00-12:00, 13:00-17:00; Sat-Sun off.

## Resources

| Resource | Rate |
| --- | --- |
| Inventrio Project Manager | 150 |
| Inventrio Software Architect | 160 |
| Inventrio Software Developer | 120 |
| Inventrio Systems Engineer | 120 |
| NCI Documentation |  |
| NCI Project Officer |  |
| NCI Quality Assurance |  |
| NCI Systems |  |
| SAIC-F Technical Project Manager |  |

## Schedule

| ID | WBS | Task | Duration | Start | Predecessors | Complete | Remaining | Total slack | Constraint | Resources | Work | Actual work |
| --- | --- | --- | --- | --- | --- | --- | --- | --- | --- | --- | --- | --- |
| 1 | 1 | Operations, Maintenance, and Support | 9mo | 2013-01-22 |  |  |  | 0d | must finish on 2013-09-30 | Inventrio Software Developer |  |  |
| 2 | 2 | **Iteration 1 - Design Approach** | 0d | 2012-12-14 |  | 6% |  | 0d | must start on 2013-01-03 |  |  |  |
| 3 | 2.1 | Start | 0h | 2013-01-03 A |  | 100% | 0h | 0d |  |  |  |  |
| 4 | 2.2 | Project Kickoff | 2.5h | 2012-12-14 A | 3 | 100% |  | 0d |  | Inventrio Software Architect; Inventrio Project Manager |  |  |
| 5 | 2.3 | Mandatory NCI Training and Account Setup | 1.25d | 2012-12-17 A | 4 | 100% | 0d | 0d |  |  | 10h | 10h |
| 6 | 2.4 | Migrate Training Grid to NCI | 45d | 2013-01-03 A | 4 | 15% |  | 0d |  | Inventrio Software Architect; Inventrio Software Developer |  |  |
| 7 | 2.5 | **Migrate from Globus to WS* (new tech stack)** | 0d | 2013-01-03 | 4 |  |  | 0d |  |  |  |  |
| 8 | 2.5.1 | Investigate WSRF services in CXF | 2w | 2013-01-03 | 4 |  |  | 0d |  |  | 80h |  |
| 9 | 2.5.2 | Develop Migration Plan | 2w | 2013-01-17 | 8 |  |  | 0d |  | Inventrio Project Manager | 80h |  |
| 10 | 2.5.3 | Design Review Meeting | 2h | 2013-01-31 | 9 |  |  | 0d |  | SAIC-F Technical Project Manager; Inventrio Software Architect; Inventrio Project Manager |  |  |
| 11 | 2.5.4 | Begin Development | 2.5w | 2013-03-13 | 10 |  |  | 0d | as late as possible | Inventrio Software Developer; Inventrio Software Architect | 200h |  |
| 12 | 2.6 | **Migrate to SHA-2** | 0d | 2013-01-03 | 4 |  |  | 0d |  |  |  |  |
| 13 | 2.6.1 | Validate Prior SHA-2 work by caGrid team | 1w | 2013-01-03 | 4 |  |  | 0d |  | Inventrio Software Architect | 40h |  |
| 14 | 2.6.2 | Design Approach | 1.5w | 2013-01-10 | 13 |  |  | 0d |  | Inventrio Software Developer; Inventrio Software Architect | 120h |  |
| 15 | 2.6.3 | Design Review Meeting | 2h | 2013-01-21 | 14 |  |  | 0d |  | SAIC-F Technical Project Manager; Inventrio Project Manager; Inventrio Software Architect |  |  |
| 16 | 2.6.4 | Begin Development | 2mo | 2013-02-01 | 15 |  |  | 0d | as late as possible | Inventrio Software Developer | 320h |  |
| 17 | 2.7 | XACML Authorization | 1d? | 2013-01-03 | 4 |  |  | 0d |  |  | 8h |  |
| 18 | 2.8 | Migration Plan: caGrid.org to NCI | 2.5d | 2013-03-07 | 6 |  |  | 0d |  | Inventrio Project Manager; Inventrio Software Architect | 40h |  |
| 19 | 2.9 | caGrid / NCI Wiki Site | 1w | 2013-01-03 | 4 |  |  | 0d | finish no later than 2013-01-22 | Inventrio Project Manager | 40h |  |
| 20 | 2.10 | Migration to Open Source Community (OSDI) | 1mo | 2013-01-03 A | 4 | 3% |  | 0d |  | Inventrio Software Architect | 160h |  |
| 21 | 2.11 | Information Systems Security Plan | 2w | 2013-01-03 | 4 |  |  | 0d |  | Inventrio Software Architect | 80h |  |
| 22 | 2.12 | Technical Project Plan | 1w | 2013-01-03 A | 4 | 6% |  | 0d | finish no later than 2013-01-22 | Inventrio Software Architect; Inventrio Project Manager | 80h |  |
| 23 | 2.13 | Financial Project Plan | 1w | 2013-01-03 | 4 |  |  | 0d |  | Inventrio Project Manager; Inventrio Software Architect | 80h |  |
| 24 | 2.14 | Quarterly In-Process Review | 2h | 2013-03-29 | 23, 19, 11, 22, 18, 16, 21 |  |  | 0d |  | Inventrio Software Architect; SAIC-F Technical Project Manager; Inventrio Project Manager; NCI Project Officer |  |  |
| 25 | 2.15 | End Iteration 1 | 0h | 2013-03-29 | 24 |  |  | 0d | must finish on 2013-03-29 |  |  |  |

| ID | WBS | Task | Duration | Start | Predecessors | Total slack | Constraint | Resources | Work |
| --- | --- | --- | --- | --- | --- | --- | --- | --- | --- |
| 26 | 3 | **Iteration 2 - Implementation** | 0d | 2013-04-01 |  | 0d | must start on 2013-04-01 |  |  |
| 27 | 3.1 | Start | 0h | 2013-04-01 | 25 | 0d |  |  |  |
| 28 | 3.2 | **Migrate from Globus to WS*** | 0d | 2013-04-01 |  | 0d |  |  |  |
| 29 | 3.2.1 | Software Development | 60d | 2013-04-01 | 11 | 0d |  | Inventrio Software Developer |  |
| 30 | 3.3 | **Migrate to SHA-2** | 0d | 2013-04-01 |  | 0d |  |  |  |
| 31 | 3.3.1 | Software Development | 30d | 2013-04-01 | 16 | 0d |  | Inventrio Software Developer |  |
| 32 | 3.4 | **XACML Authorization** | 0d | 2013-04-01 |  | 0d |  |  |  |
| 33 | 3.4.1 | Design Approach | 1w | 2013-04-01 | 27 | 0d |  | Inventrio Software Architect; Inventrio Software Developer | 80h |
| 34 | 3.4.2 | Design Review Meeting | 2h | 2013-04-08 | 33 | 0d |  | SAIC-F Technical Project Manager; Inventrio Software Architect; Inventrio Project Manager |  |
| 35 | 3.4.3 | Software Development | 30d | 2013-04-08 | 34 | 0d |  | Inventrio Software Developer |  |
| 36 | 3.5 | Simplify use of caGrid in Infrastructure | 20d | 2013-04-01 | 27 | 0d |  | Inventrio Software Architect |  |
| 37 | 3.6 | Quarterly In-Process Review | 2h | 2013-06-24 | 36, 6, 27, 31, 29 | 0d |  | Inventrio Project Manager; NCI Project Officer; SAIC-F Technical Project Manager; Inventrio Software Architect |  |
| 38 | 3.7 | End Iteration 2 | 0h | 2013-06-24 | 37 | 0d |  |  |  |
| 39 | 4 | **Iteration 3 - Deployment and Delivery** | 0d | 2013-07-01 |  | 0d | must start on 2013-07-01 |  |  |
| 40 | 4.1 | Start | 0h | 2013-07-01 | 38 | 0d |  |  |  |
| 41 | 4.2 | Operational Readiness Review | 2h | 2013-07-01 | 40 | 0d |  | Inventrio Project Manager; Inventrio Software Architect; SAIC-F Technical Project Manager |  |
| 42 | 4.3 | **Migrate to SHA-2** | 0d | 2013-07-01 |  | 0d |  |  |  |
| 43 | 4.3.1 | Finish Development | 1.5mo | 2013-07-01 | 31 | 0d |  | Inventrio Software Developer | 240h |
| 44 | 4.4 | **XACML Authorization** | 0d | 2013-07-01 |  | 0d |  |  |  |
| 45 | 4.4.1 | Finish Development | 1.5mo | 2013-07-01 | 35 | 0d |  | Inventrio Software Developer | 240h |
| 46 | 4.5 | Quality Assurance | 3w | 2013-08-12 | 45, 43 | 0d |  | NCI Quality Assurance | 120h |
| 47 | 4.6 | Documentation | 2w | 2013-08-12 | 45, 29, 43, 25 | 0d |  | NCI Documentation | 80h |
| 48 | 4.7 | **Deployment** | 0d | 2013-07-01 |  | 0d |  |  |  |
| 49 | 4.7.1 | Architecture Review Checklist | 1w | 2013-07-01 | 41 | 0d |  | Inventrio Project Manager | 40h |
| 50 | 4.7.2 | Deployment to Stage | 1w | 2013-09-02 | 47, 46 | 0d |  | NCI Systems | 40h |
| 51 | 4.7.3 | Deployment to Production | 1w | 2013-09-09 | 50 | 0d |  | NCI Systems | 40h |
| 52 | 4.8 | Quarterly In-Process Review | 2h | 2013-07-01 | 18, 20 | 0d |  | Inventrio Software Architect; Inventrio Project Manager; NCI Project Officer; SAIC-F Technical Project Manager |  |
| 53 | 4.9 | End Iteration 3 | 0h | 2013-07-01 | 52 | 0d |  |  |  |
| 54 | 5 | Project Summary Report | 5d | 2013-10-01 | 1, 53 | 0d |  | Inventrio Project Manager |  |
