# caGrid_Portal-2-1

Schedule from MS Project, 2008-11-05 to 2008-12-29.
NCI CBIIT

## Calendars

- Standard: Mon-Fri 08:00-12:00, 13:00-17:00; Sat-Sun off.

## Resources

| Resource |
| --- |
| Manav Kher |
| Joshua Phillips |
| Carolyln Klinger |
| John Eisenschmidt |
| Quality Assurance |
| Systems |

## Schedule

| ID | WBS | Task | Type | Duration | Start | Finish | Predecessors | Total slack | Free slack | Constraint | Resources | Work |
| --- | --- | --- | --- | --- | --- | --- | --- | --- | --- | --- | --- | --- |
| 1 | 1.0 | **caGrid Portal 2.2** |  | 38.4d? | 2008-11-05 | 2008-12-29 |  | 0d |  |  |  | 268.8h |
| 2 | 1.1 | Start | milestone | 0d | 2008-11-05 | 2008-11-05 |  | 0d |  | start no earlier than 2008-11-05 |  |  |
| 3 | 1.2 | **Bug Fixes** |  | 1d? | 2008-11-05 | 2008-11-05 |  | 28.3d |  |  |  | 28.8h |
| 4 | 1.2.1 | Start | milestone | 0d | 2008-11-05 | 2008-11-05 | 2 | 15.8d | 0d |  |  |  |
| 5 | 1.2.2 | training grid syncgts URLs need to be updated |  | 1d | 2008-11-05 | 2008-11-05 | 4 | 28.3d | 0d |  | Manav Kher [90%] | 7.2h |
| 6 | 1.2.3 | Portal does not delete local user account when deleting liferay user account |  | 1d? | 2008-11-05 | 2008-11-05 | 4 | 28.3d | 0d |  | Manav Kher [90%] | 7.2h |
| 9 | 1.2.4 | Finish | milestone | 0d | 2008-11-05 | 2008-11-05 | 5, 6 | 28.3d |  |  |  |  |
| 10 | 1.3 | **Enhancements** |  | 29.3d? | 2008-11-05 | 2008-12-16 |  | 0d |  |  |  | 64.8h |
| 11 | 1.3.1 | Start | milestone | 0d | 2008-11-05 | 2008-11-05 | 2 | 0d |  |  |  |  |
| 12 | 1.3.2 | Page Loading Performance Enhancements |  | 1d? | 2008-11-05 | 2008-11-12 | 11 | 0d |  |  | Manav Kher [90%] | 7.2h |
| 13 | 1.3.3 | Upgrade to Latest Liferay |  | 1d? | 2008-11-12 | 2008-11-13 | 12 | 0d |  |  | Manav Kher [90%] | 7.2h |
| 14 | 1.3.4 | Tech Stack Update to Latest Spring and Hibernate |  | 1d? | 2008-11-13 | 2008-11-14 | 13 | 0d |  |  | Manav Kher [90%] | 7.2h |
| 15 | 1.3.5 | Aggregation Performance Enhancements |  | 1d? | 2008-11-14 | 2008-12-09 | 14 | 0d |  |  | Manav Kher [90%] | 7.2h |
| 16 | 1.3.6 | Refactor Build Process to Support IVY |  | 1d? | 2008-12-09 | 2008-12-10 | 15 | 0d |  |  | Manav Kher [90%] | 7.2h |
| 17 | 1.3.7 | Deployment Refactor to Support non-Root Context |  | 1d? | 2008-12-10 | 2008-12-11 | 16 | 0d |  |  | Manav Kher [90%] | 7.2h |
| 18 | 1.3.8 | Community Portlets: Use Cases and SOPs |  | 1d? | 2008-12-11 | 2008-12-12 | 17 | 0d |  |  | Manav Kher [90%] | 7.2h |
| 19 | 1.3.9 | Investigate Feasibility and Performance of WSRP |  | 1d? | 2008-12-12 | 2008-12-15 | 18 | 0d |  |  | Manav Kher [90%] | 7.2h |
| 20 | 1.3.10 | Support Usability Analysis |  | 1d? | 2008-12-15 | 2008-12-16 | 19 | 0d |  |  | Manav Kher [90%] | 7.2h |
| 21 | 1.3.11 | Finish | milestone | 0d | 2008-12-16 | 2008-12-16 | 12, 13, 14, 15, 16, 17, 18, 19, 20 | 0d |  |  |  |  |
| 22 | 1.4 | **Documentation** |  | 7.6d | 2008-12-16 | 2008-12-25 |  | 0d |  |  |  | 99.6h |
| 23 | 1.4.1 | Start | milestone | 0d | 2008-12-16 | 2008-12-16 | 9, 21 | 0d |  | start no earlier than 2008-09-22 |  |  |
| 24 | 1.4.2 | Update Admin Guide |  | 4d | 2008-12-16 | 2008-12-22 | 23 | 3.6d |  |  | Carolyln Klinger | 32h |
| 25 | 1.4.3 | Update Install Guide |  | 3d | 2008-12-16 | 2008-12-22 | 23 | 3.3d |  |  | Carolyln Klinger | 24h |
| 26 | 1.4.4 | Update User Guide |  | 5d | 2008-12-16 | 2008-12-25 | 23 | 0d |  |  | Carolyln Klinger | 40h |
| 27 | 1.4.5 | Release Notes |  | 0.5d | 2008-12-23 | 2008-12-23 | 23 | 2.1d |  |  | Manav Kher [90%] | 3.6h |
| 28 | 1.4.6 | Finish | milestone | 0d | 2008-12-25 | 2008-12-25 | 24, 25, 26, 27 | 0d |  |  |  |  |

| ID | WBS | Task | Type | Duration | Start | Finish | Predecessors | Total slack | Free slack | Resources | Work |
| --- | --- | --- | --- | --- | --- | --- | --- | --- | --- | --- | --- |
| 29 | 1.5 | **QA** |  | 3d? | 2008-12-16 | 2008-12-19 |  | 0.6d |  |  | 24h |
| 30 | 1.5.1 | Start | milestone | 0d | 2008-12-16 | 2008-12-16 | 9, 21 | 0.6d | 0d |  |  |
| 31 | 1.5.2 | QA Iteration 1 (December) |  | 1d? | 2008-12-16 | 2008-12-17 | 30 | 0.6d | 0d | Quality Assurance | 8h |
| 32 | 1.5.3 | QA Iteration 2 (January) |  | 1d? | 2008-12-17 | 2008-12-18 | 31 | 0.6d | 0d | Quality Assurance | 8h |
| 33 | 1.5.4 | QA Iteration 3 (February) |  | 1d? | 2008-12-18 | 2008-12-19 | 32 | 0.6d | 0d | Quality Assurance | 8h |
| 34 | 1.5.5 | Finish | milestone | 0d | 2008-12-19 | 2008-12-19 | 33 | 0.6d | 0d |  |  |
| 35 | 1.6 | **Deployment** |  | 6.1d | 2008-12-19 | 2008-12-29 |  | 0d |  |  | 51.6h |
| 36 | 1.6.1 | Start | milestone | 0d | 2008-12-19 | 2008-12-19 | 34 | 0.6d | 0d |  |  |
| 37 | 1.6.2 | Stage |  | 1d | 2008-12-19 | 2008-12-22 | 36 | 0.6d | 0d | Systems | 8h |
| 38 | 1.6.3 | App Scan |  | 3d | 2008-12-22 | 2008-12-25 | 37 | 0.6d |  | Systems | 24h |
| 39 | 1.6.4 | Production |  | 1d | 2008-12-25 | 2008-12-26 | 38, 28 | 0d |  | Systems | 8h |
| 40 | 1.6.5 | Update gforge |  | 0.5d | 2008-12-19 | 2008-12-19 | 36 | 5.6d |  | John Eisenschmidt; Manav Kher [90%] | 7.6h |
| 41 | 1.6.6 | Send Release Announcement |  | 0.5d | 2008-12-26 | 2008-12-29 | 39 | 0d |  | John Eisenschmidt | 4h |
| 42 | 1.6.5 | Finish | milestone | 0d | 2008-12-29 | 2008-12-29 | 41 | 0d |  |  |  |
| 43 | 1.7 | Finish | milestone | 0d | 2008-12-29 | 2008-12-29 | 42 | 0d |  |  |  |
