# caGrid_Portal-2-1

Schedule from MS Project, 2008-07-31 to 2008-08-18, A marks actual dates.
Personal

## Calendars

- Standard: Mon-Fri 08:00-12:00, 13:00-17:00; Sat-Sun off.

## Resources

| Resource |
| --- |
| Manav Kher |
| Joshua Phillips |
| Carolyln Klinger |
| John Eisenschmidt |
| Quality Assurance |
| Systems |

## Schedule

| ID | WBS | Task | Type | Duration | Start | Finish | Predecessors | Complete | Remaining | Total slack | Free slack | Resources | Work | Actual work |
| --- | --- | --- | --- | --- | --- | --- | --- | --- | --- | --- | --- | --- | --- | --- |
| 1 | 1.0 | **caGrid Portal 2.0.3** |  | 8.75d? | 2008-07-31 A | 2008-08-12 |  | 20% | 6.96d? | 3.5d |  |  | 159.6h | 30.24h |
| 2 | 1.1 | Start | milestone | 0d | 2008-07-31 A | 2008-07-31 A |  | 100% |  |  |  |  |  |  |
| 3 | 1.2 | **Bug Fixes** |  | 1d? | 2008-07-31 A | 2008-07-31 A | 2 | 100% |  |  |  |  | 14.4h | 14.4h |
| 4 | 1.2.1 | Start | milestone | 0d | 2008-07-31 A | 2008-07-31 A |  | 100% |  |  |  |  |  |  |
| 5 | 1.2.2 | RuntimeException thrown in Portal 2.0.2 |  | 1d? | 2008-07-31 A | 2008-07-31 A | 4 | 100% |  |  |  | Manav Kher [90%] | 7.2h | 7.2h |
| 6 | 1.2.3 | Problem with RFE 12079 implementation for Portal |  | 1d? | 2008-07-31 A | 2008-07-31 A | 4 | 100% |  |  |  | Manav Kher [90%] | 7.2h | 7.2h |
| 7 | 1.2.4 | Finish | milestone | 0d | 2008-07-31 A | 2008-07-31 A | 5, 6 | 100% |  |  |  |  |  |  |
| 8 | 1.3 | **Enhancements** |  | 1d? | 2008-07-31 A | 2008-07-31 | 2 | 73% | 0.27d? | 11.25d |  |  | 21.6h | 15.84h |
| 9 | 1.3.1 | Start | milestone | 0d | 2008-07-31 A | 2008-07-31 A |  | 100% |  |  |  |  |  |  |
| 10 | 1.3.2 | User developed Portlets |  | 1d? | 2008-07-31 A | 2008-07-31 | 9 | 50% | 0.5d? | 0d |  | Manav Kher [90%] | 7.2h | 3.6h |
| 11 | 1.3.3 | Admin UI for Banning/Unbanning |  | 1d? | 2008-07-31 A | 2008-07-31 A | 9 | 100% |  |  |  | Manav Kher [90%] | 7.2h | 7.2h |
| 12 | 1.3.4 | Service Diagnostic Portlet |  | 1d? | 2008-07-31 A | 2008-07-31 | 9 | 70% | 0.3d? | 11.25d |  | Manav Kher [90%] | 7.2h | 5.04h |
| 13 | 1.3.5 | Finish | milestone | 0d | 2008-07-31 | 2008-07-31 | 10, 76, 77, 78 |  |  | 0d |  |  |  |  |
| 14 | 1.4 | **Documentation** |  | 2d | 2008-07-31 | 2008-08-04 |  |  |  | 9.25d |  |  | 54h |  |
| 15 | 1.4.1 | Start | milestone | 0d | 2008-07-31 | 2008-07-31 | 7, 13 |  |  | 9.25d | 0d |  |  |  |
| 16 | 1.4.2 | Documentation for User-developed Portlets |  | 2d | 2008-08-01 | 2008-08-04 | 15 |  |  | 9.25d | 0d | Manav Kher [90%] | 14.4h |  |
| 17 | 1.4.3 | Update Admin Guide |  | 1.5d | 2008-08-01 | 2008-08-04 | 15 |  |  | 9.75d | 0.5d | Carolyln Klinger | 12h |  |
| 18 | 1.4.4 | Update Install Guide |  | 1.5d | 2008-08-01 | 2008-08-04 | 15 |  |  | 9.75d | 0.5d | Carolyln Klinger | 12h |  |
| 19 | 1.4.5 | Update User Guide |  | 1.5d | 2008-08-01 | 2008-08-04 | 15 |  |  | 9.75d | 0.5d | Carolyln Klinger | 12h |  |
| 20 | 1.4.6 | Release Notes |  | 0.5d | 2008-08-01 | 2008-08-01 | 15 |  |  | 10.75d | 1.5d | Manav Kher [90%] | 3.6h |  |
| 21 | 1.4.7 | Finish | milestone | 0d | 2008-08-04 | 2008-08-04 | 17, 18, 19, 20, 16 |  |  | 9.25d |  |  |  |  |
| 22 | 1.5 | **QA** |  | 2.5d | 2008-07-31 | 2008-08-05 | 2 |  |  | 0d |  |  | 18h |  |
| 23 | 1.5.1 | Start | milestone | 0d | 2008-07-31 | 2008-07-31 | 7, 13 |  |  | 0d |  |  |  |  |
| 24 | 1.5.2 | Support QA during testing |  | 2.5d | 2008-08-01 | 2008-08-05 | 23 |  |  | 0d |  | Manav Kher [90%] | 18h |  |
| 25 | 1.5.3 | Finish | milestone | 0d | 2008-08-05 | 2008-08-05 | 24 |  |  | 0d |  |  |  |  |

| ID | WBS | Task | Type | Duration | Start | Finish | Predecessors | Total slack | Free slack | Constraint | Resources | Work |
| --- | --- | --- | --- | --- | --- | --- | --- | --- | --- | --- | --- | --- |
| 26 | 1.6 | **Deployment** |  | 5.25d | 2008-08-05 | 2008-08-12 | 2 | 0d |  |  |  | 51.6h |
| 27 | 1.6.1 | Start | milestone | 0d | 2008-08-05 | 2008-08-05 | 25 | 0d |  |  |  |  |
| 28 | 1.6.2 | Stage |  | 1d | 2008-08-05 | 2008-08-06 | 27 | 0d |  |  | Systems | 8h |
| 29 | 1.6.3 | App Scan |  | 3d | 2008-08-06 | 2008-08-11 | 28 | 0d |  |  | Systems | 24h |
| 30 | 1.6.4 | Production |  | 1d | 2008-08-11 | 2008-08-12 | 29 | 0d |  |  | Systems | 8h |
| 31 | 1.6.5 | Update Plome |  | 0.25d | 2008-08-05 | 2008-08-05 | 27 | 8.5d |  |  | John Eisenschmidt | 2h |
| 32 | 1.6.6 | Update gforge |  | 0.5d | 2008-08-05 | 2008-08-05 | 27 | 8.25d |  |  | John Eisenschmidt; Manav Kher [90%] | 7.6h |
| 33 | 1.6.7 | Send Release Announcement |  | 0.25d | 2008-08-12 | 2008-08-12 | 30 | 0d |  |  | John Eisenschmidt | 2h |
| 34 | 1.6.5 | Finish | milestone | 0d | 2008-08-12 | 2008-08-12 | 33 | 0d |  |  |  |  |
| 35 | 1.7 | Finish | milestone | 0d | 2008-08-12 | 2008-08-12 | 34 | 0d |  |  |  |  |
| 36 | 2.0 | **caGrid Portal 2.0.4** |  | 10.25d? | 2008-08-01 | 2008-08-18 |  | 0d |  |  |  |  |
| 37 | 2.2 | Start | milestone | 0d | 2008-08-12 | 2008-08-12 | 35 | 0d |  | start no earlier than 2008-07-31 |  |  |
| 38 | 2.3 | **Bug Fixes** |  | 0d | 2008-08-12 | 2008-08-12 |  | 1d |  |  |  |  |
| 39 | 2.3.1 | Start | milestone | 0d | 2008-08-12 | 2008-08-12 | 37 | 1d | 0d |  |  |  |
| 40 | 2.3.2 | Finish | milestone | 0d | 2008-08-12 | 2008-08-12 | 39 | 1d |  |  |  |  |
| 41 | 2.4 | **Enhancements** |  | 1d? | 2008-08-12 | 2008-08-13 |  | 0d |  |  |  |  |
| 42 | 2.4.1 | Start | milestone | 0d | 2008-08-12 | 2008-08-12 | 37 | 0d |  |  |  |  |
| 43 | 2.4.2 | Service Diagnostics Portlet |  | 1d? | 2008-08-12 | 2008-08-13 | 42 | 0d |  |  |  |  |
| 44 | 2.4.3 | GAARDS UI Integration |  | 1d? | 2008-08-12 | 2008-08-13 | 42 | 0d |  |  |  |  |
| 45 | 2.4.4 | Federated Query Builder Enhancements |  | 1d? | 2008-08-12 | 2008-08-13 | 42 | 0d |  |  |  |  |
| 46 | 2.4.5 | Shared Query Enhancements |  | 1d? | 2008-08-12 | 2008-08-13 | 42 | 0d |  |  |  |  |
| 47 | 2.4.6 | Notification Framework |  | 1d? | 2008-08-12 | 2008-08-13 | 42 | 0d |  |  |  |  |
| 48 | 2.4.7 | Provide RSS feed for newly discovered services |  | 1d? | 2008-08-12 | 2008-08-13 | 42 | 0d |  |  |  |  |
| 49 | 2.4.8 | Workflow Integration |  | 1d? | 2008-08-12 | 2008-08-13 | 42 | 0d |  |  |  |  |
| 50 | 2.4.9 | Support Parameterized Queries |  | 1d? | 2008-08-12 | 2008-08-13 | 42 | 0d |  |  |  |  |
| 51 | 2.4.10 | WebSSO Integration |  | 1d? | 2008-08-12 | 2008-08-13 | 42 | 0d |  |  |  |  |
| 52 | 2.4.11 | address xss issues in portal input fields |  | 1d? | 2008-08-12 | 2008-08-13 | 42 | 0d |  |  |  |  |
| 53 | 2.4.12 | Finish | milestone | 0d | 2008-08-13 | 2008-08-13 | 43, 44, 45, 46, 47, 48, 49, 50, 52, 51 | 0d |  |  |  |  |

| ID | WBS | Task | Type | Duration | Start | Finish | Predecessors | Total slack | Free slack | Constraint | Resources | Work |
| --- | --- | --- | --- | --- | --- | --- | --- | --- | --- | --- | --- | --- |
| 54 | 2.5 | **Documentation** |  | 1d? | 2008-08-13 | 2008-08-14 |  | 1.5d |  |  |  |  |
| 55 | 2.5.1 | Start | milestone | 0d | 2008-08-13 | 2008-08-13 | 40, 53 | 1.5d | 0d | start no earlier than 2008-07-31 |  |  |
| 56 | 2.5.2 | Update Admin Guide |  | 1d? | 2008-08-13 | 2008-08-14 | 55 | 1.5d | 0d | start no earlier than 2008-08-01 |  |  |
| 57 | 2.5.3 | Update Install Guide |  | 1d? | 2008-08-13 | 2008-08-14 | 55 | 1.5d | 0d | start no earlier than 2008-08-01 |  |  |
| 58 | 2.5.4 | Update User Guide |  | 1d? | 2008-08-13 | 2008-08-14 | 55 | 1.5d | 0d | start no earlier than 2008-08-01 |  |  |
| 59 | 2.5.5 | Release Notes |  | 1d? | 2008-08-13 | 2008-08-14 | 55 | 1.5d | 0d | start no earlier than 2008-08-01 |  |  |
| 60 | 2.5.6 | Finish | milestone | 0d | 2008-08-14 | 2008-08-14 | 56, 57, 58, 59 | 1.5d |  | start no earlier than 2008-08-01 |  |  |
| 61 | 2.6 | **QA** |  | 2.5d | 2008-08-13 | 2008-08-18 |  | 0d |  |  |  |  |
| 62 | 2.6.1 | Start | milestone | 0d | 2008-08-13 | 2008-08-13 | 40, 53 | 0d |  | start no earlier than 2008-07-31 |  |  |
| 63 | 2.6.2 | Support QA during testing |  | 2.5d | 2008-08-13 | 2008-08-18 | 62 | 0d |  | start no earlier than 2008-08-01 |  |  |
| 64 | 2.6.3 | Finish | milestone | 0d | 2008-08-18 | 2008-08-18 | 63 | 0d |  | start no earlier than 2008-08-01 |  |  |
| 65 | 2.7 | **Deployment** |  | 5.25d | 2008-08-01 | 2008-08-11 |  | 5d |  |  |  |  |
| 66 | 2.7.1 | Start | milestone | 0d | 2008-08-01 | 2008-08-01 |  | 5d | 0d | start no earlier than 2008-08-01 |  |  |
| 67 | 2.7.2 | Stage |  | 1d | 2008-08-04 | 2008-08-04 | 66 | 5d | 0d | start no earlier than 2008-08-04 |  |  |
| 68 | 2.7.3 | App Scan |  | 3d | 2008-08-05 | 2008-08-07 | 67 | 5d | 0d | start no earlier than 2008-08-05 |  |  |
| 69 | 2.7.4 | Production |  | 1d | 2008-08-08 | 2008-08-08 | 68 | 5d | 0d | start no earlier than 2008-08-06 |  |  |
| 70 | 2.7.5 | Update Plome |  | 0.25d | 2008-08-04 | 2008-08-04 | 66 | 10d |  | start no earlier than 2008-08-04 |  |  |
| 71 | 2.7.6 | Update gforge |  | 0.5d | 2008-08-04 | 2008-08-04 | 66 | 9.75d |  | start no earlier than 2008-08-04 |  |  |
| 72 | 2.7.7 | Send Release Announcement |  | 0.25d | 2008-08-11 | 2008-08-11 | 69 | 5d | 0d | start no earlier than 2008-08-07 |  |  |
| 73 | 2.7.8 | Finish | milestone | 0d | 2008-08-11 | 2008-08-11 | 72 | 5d | 0d | start no earlier than 2008-08-07 |  |  |
| 74 | 2.8 | Finish | milestone | 0d | 2008-08-11 | 2008-08-11 | 73 | 5d |  | start no earlier than 2008-08-07 |  |  |
| 76 | 3 | Portal needs participant admin UI |  | 1d? | 2008-07-31 | 2008-07-31 | 9 | 0d |  |  | Manav Kher [90%] | 7.2h |
| 77 | 4 | Provide interface to make participant information update requests. |  | 1d? | 2008-07-31 | 2008-07-31 | 9 | 0d |  |  | Manav Kher [90%] | 7.2h |
| 78 | 5 | Portal EVS autocompleter should allow user to select where in the metadata the match shold occur. |  | 1d? | 2008-07-31 | 2008-07-31 | 9 | 0d |  |  | Manav Kher [90%] | 7.2h |
